Schedule from MS Project, 2017-09-04 to 2018-10-12, costs in $, A marks actual dates.
Banco Popular

## Calendars

- Estándar: Mon-Fri 09:00-13:00, 15:00-19:00; Sat-Sun off.

## Resources

| Resource | Rate |
| --- | --- |
| Desarrollador java | 15625 |
| Desarrllador Web | 15625 |
| Administrador Bases de Datos | 22500 |
| Servidor Web | 7200000 |
| Servidor BD | 7200000 |
| Pc desarrollador java | 3500000 |
| Pc Desarrollador Web | 3500000 |
| Pc DBA | 3500000 |
| Gerente de Proyecto | 43750 |
| Lider Tecnico | 14375 |
| Analista Tecnico | 11250 |

## Schedule

| ID | WBS | Task | Duration | Start | Finish | Predecessors | Complete | Actual finish | Constraint | Resources | Work | Actual work | Cost | Actual cost |
| --- | --- | --- | --- | --- | --- | --- | --- | --- | --- | --- | --- | --- | --- | --- |
| 1 | 1 | **Trimestre I** | 52d | 2017-09-27 A | 2017-12-07 A |  | 100% |  |  |  | 720h | 720h | 19,000,000 | 19,000,000 |
| 2 | 1.1 | Objetivo General | 3d | 2017-10-11 A | 2017-10-13 A | 5 | 100% |  |  | Gerente de Proyecto | 24h | 24h | 1,050,000 | 1,050,000 |
| 3 | 1.2 | Objetivos Especificos | 4d | 2017-10-16 A | 2017-10-19 A | 6 | 100% |  |  | Gerente de Proyecto; Analista Tecnico | 32h | 32h | 1,400,000 | 1,400,000 |
| 4 | 1.3 | Planteamiento del Problema | 3d | 2017-09-27 A | 2017-09-29 A |  | 100% |  | start no earlier than 2017-09-27 | Gerente de Proyecto | 24h | 24h | 1,050,000 | 1,050,000 |
| 5 | 1.4 | Alcance del Proyecto | 7d | 2017-10-02 A | 2017-10-10 A | 4 | 100% |  |  | Gerente de Proyecto; Analista Tecnico | 56h | 56h | 2,450,000 | 2,450,000 |
| 6 | 1.5 | Justificacion | 4d | 2017-10-10 A | 2017-10-13 A |  | 100% |  | start no earlier than 2017-10-10 | Gerente de Proyecto | 32h | 32h | 1,400,000 | 1,400,000 |
| 7 | 1.6 | Tecnicas de Levantamiento de Informacion | 20d | 2017-10-16 A | 2017-11-10 A | 2 | 100% |  |  | Lider Tecnico | 160h | 160h | 2,300,000 | 2,300,000 |
| 8 | 1.7 | Mapa de Procesos BPMN | 19d | 2017-11-13 A | 2017-12-07 A |  | 100% |  | finish no earlier than 2017-12-07 | Gerente de Proyecto; Analista Tecnico | 152h | 152h | 6,650,000 | 6,650,000 |
| 9 | 1.8 | Inventario de Hardware y Software | 30d | 2017-10-02 A | 2017-11-10 A |  | 100% |  | start no earlier than 2017-10-02 | Analista Tecnico | 240h | 240h | 2,700,000 | 2,700,000 |
| 10 | 2 | **Trimestre II** | 76.5d | 2018-01-29 A | 2018-05-15 A |  | 100% |  |  |  | 1136h | 1136h | 27,870,000 | 27,870,000 |
| 11 | 2.1 | Refinamiento de requerimientos Funcionales y No Funcionales | 20d | 2018-01-29 A | 2018-02-23 A |  | 100% |  |  | Analista Tecnico | 160h | 160h | 1,800,000 | 1,800,000 |
| 12 | 2.2 | Diagrama de Gantt | 47d | 2018-03-08 A | 2018-05-15 A |  | 100% |  | finish no earlier than 2018-04-11 | Gerente de Proyecto | 376h | 376h | 16,450,000 | 16,450,000 |
| 13 | 2.3 | Diagramas Casos de Uso | 30d | 2018-02-20 A | 2018-04-02 A |  | 100% |  | start no earlier than 2018-02-20 | Lider Tecnico | 240h | 240h | 3,450,000 | 3,450,000 |
| 14 | 2.4 | Diagrama de Clases | 14d | 2018-03-12 A | 2018-03-29 A |  | 100% |  | finish no earlier than 2018-03-20 | Lider Tecnico | 112h | 112h | 1,610,000 | 1,610,000 |
| 15 | 2.5 | Diagrama de Transicion de Estado | 10d | 2018-04-02 A | 2018-04-13 A |  | 100% |  | finish no earlier than 2018-04-06 | Lider Tecnico | 80h | 80h | 1,150,000 | 1,150,000 |
| 16 | 2.6 | Diagrama de Secuencias | 4d | 2018-04-02 A | 2018-04-09 A |  | 100% |  | finish no earlier than 2018-04-09 | Lider Tecnico | 32h | 32h | 460,000 | 460,000 |
| 17 | 2.7 | Modelo Conceptual de Base de Datos | 5d | 2018-03-20 A | 2018-04-01 A |  | 100% |  | finish no earlier than 2018-04-01 | Administrador Bases de Datos | 40h | 40h | 900,000 | 900,000 |
| 18 | 2.8 | Diccionario de Datos | 10d | 2018-04-01 A | 2018-04-13 A |  | 100% |  | finish no earlier than 2018-04-06 | Administrador Bases de Datos | 80h | 80h | 1,800,000 | 1,800,000 |
| 19 | 2.9 | Patrones de Diseño | 2d | 2018-04-05 A | 2018-04-06 A |  | 100% |  | finish no earlier than 2018-04-06 | Desarrllador Web | 16h | 16h | 250,000 | 250,000 |
| 20 | 3 | **Trimestre III** | 60d | 2018-03-05 A | 2018-05-25 |  | 100% | 2018-05-22 |  |  | 768h | 768h | 15,790,000 | 15,790,000 |
| 21 | 3.1 | Cuadro comparativo de los diferente proveedores donde se obtendrá el hardware y software | 4d | 2018-03-05 A | 2018-03-08 A |  | 100% |  |  | Gerente de Proyecto | 32h | 32h | 1,400,000 | 1,400,000 |
| 22 | 3.2 | Sistemas de control de versiones | 10d | 2018-03-09 A | 2018-03-22 A | 21 | 100% |  |  | Desarrllador Web; Desarrollador java | 160h | 160h | 2,500,000 | 2,500,000 |
| 23 | 3.3 | Sistemas de integración continua(Opcional) | 8d | 2018-03-23 A | 2018-04-03 A | 22 | 100% |  |  | Lider Tecnico | 64h | 64h | 920,000 | 920,000 |
| 24 | 3.4 | **Base de Datos** | 26d | 2018-04-04 A | 2018-05-09 A |  | 100% |  |  | Administrador Bases de Datos | 432h | 432h | 9,720,000 | 9,720,000 |
| 25 | 3.4.1 | Construcción de la Base de Datos | 20d | 2018-04-04 A | 2018-05-01 A |  | 100% |  | start no earlier than 2018-04-04 | Administrador Bases de Datos | 160h | 160h | 3,600,000 | 3,600,000 |
| 26 | 3.4.2 | Datos insertados en la Base de Datos | 5d | 2018-05-01 A | 2018-05-07 A |  | 100% |  | start no earlier than 2018-05-01 | Administrador Bases de Datos | 40h | 40h | 900,000 | 900,000 |
| 27 | 3.4.3 | Consultas y joins en la Base de Datos | 3d | 2018-05-07 A | 2018-05-09 A |  | 100% |  | start no earlier than 2018-05-07 | Administrador Bases de Datos | 24h | 24h | 540,000 | 540,000 |
| 28 | 3.5 | Prototipo no funcional usando CSS a partir de un mockup o wireframe | 10d | 2018-05-09 A | 2018-05-22 A |  | 100% |  | start no earlier than 2018-05-09 | Desarrllador Web | 80h | 80h | 1,250,000 | 1,250,000 |

| ID | WBS | Task | Duration | Start | Finish | Predecessors | Complete | Remaining | Actual start | Total slack | Free slack | Constraint | Resources | Work | Actual work | Cost | Actual cost |
| --- | --- | --- | --- | --- | --- | --- | --- | --- | --- | --- | --- | --- | --- | --- | --- | --- | --- |
| 29 | 4 | **Trimestre IV** | 75d | 2018-07-02 | 2018-10-12 |  | 12% | 66.04d | 2018-06-07 |  |  |  |  | 192h | 24h | 4,750,000 | 345,000 |
| 30 | 4.1 | **Pruebas: Utilizando una técnica que se acople a la herramienta tecnológica según el lenguaje de programación utilizado** | 20d | 2018-07-02 | 2018-07-27 |  | 25% | 14.91d | 2018-06-07 |  |  |  |  | 40h | 24h | 575,000 | 345,000 |
| 31 | 4.1.1 | Pruebas unitarias | 3d | 2018-07-02 A | 2018-07-04 A |  | 100% |  |  |  |  | start no earlier than 2018-06-21 | Lider Tecnico | 24h | 24h | 345,000 | 345,000 |
| 32 | 4.1.2 | Pruebas caja negra | 4d | 2018-07-04 A | 2018-07-09 |  | 50% | 2d |  | 0.2d | 0d | start no earlier than 2018-06-25 |  |  |  |  |  |
| 33 | 4.1.3 | Pruebas caja blanca | 2d | 2018-06-07 | 2018-06-08 |  |  |  |  | 90d |  | start no earlier than 2018-06-07 | Lider Tecnico | 16h |  | 230,000 |  |
| 34 | 4.1.4 | Pruebas funcionales | 2.2d | 2018-07-09 A | 2018-07-11 | 32 | 18% | 1.8d |  | 67d |  |  |  |  |  |  |  |
| 35 | 4.1.5 | Pruebas de humo | 2d | 2018-07-11 | 2018-07-12 |  |  |  |  | 66d |  | start no earlier than 2018-07-11 |  |  |  |  |  |
| 36 | 4.1.6 | Pruebas regresión | 3d | 2018-07-12 | 2018-07-16 |  |  |  |  | 64d |  | start no earlier than 2018-07-12 |  |  |  |  |  |
| 37 | 4.1.7 | Pruebas del sistema | 2d | 2018-07-17 | 2018-07-18 |  |  |  |  | 62d |  | start no earlier than 2018-07-17 |  |  |  |  |  |
| 38 | 4.1.8 | Pruebas de stress | 3d | 2018-07-19 | 2018-07-23 |  |  |  |  | 59d |  | start no earlier than 2018-07-19 |  |  |  |  |  |
| 39 | 4.2 | **Pruebas de desempeño** | 11d | 2018-07-24 | 2018-08-07 |  |  |  |  |  |  |  | Desarrollador java | 88h |  | 1,375,000 |  |
| 40 | 4.2.1 | Pruebas de integridad de datos y bases de datos | 3d | 2018-07-25 | 2018-07-27 |  |  |  |  | 55d |  | start no earlier than 2018-07-25 |  |  |  |  |  |
| 41 | 4.2.2 | Pruebas de seguridad y control de acceso | 2d | 2018-08-02 | 2018-08-03 | 43 |  |  |  | 50d |  |  |  |  |  |  |  |
| 42 | 4.2.3 | Pruebas de GUI(Interfaces graficas de usuario) | 3d | 2018-08-03 | 2018-08-07 |  |  |  |  | 48d |  | start no earlier than 2018-08-03 |  |  |  |  |  |
| 43 | 4.2.4 | Para Metodología SCRUM: Pruebas de TDD y BDD | 2d | 2018-07-31 | 2018-08-01 |  |  |  |  | 50d | 0d | start no earlier than 2018-07-31 |  |  |  |  |  |
| 44 | 4.3 | **Implementación del diagrama de distribución** | 12d | 2018-07-02 | 2018-07-17 |  |  |  |  |  |  |  |  |  |  |  |  |
| 45 | 4.3.1 | Despliegue de la aplicación en un servidor dependiendo del lenguaje de programación | 1d | 2018-07-02 | 2018-07-02 |  |  |  |  | 74d |  |  |  |  |  |  |  |
| 46 | 4.3.2 | Informe de migración de datos | 1d | 2018-07-02 | 2018-07-02 |  |  |  |  | 74d |  |  |  |  |  |  |  |
| 47 | 4.3.3 | Plan de instalación, plan de respaldo y plan de migración | 2d | 2018-07-02 | 2018-07-03 |  |  |  |  | 73d |  |  |  |  |  |  |  |
| 48 | 4.3.4 | Manuales de usuario y de operación | 2d | 2018-07-02 | 2018-07-03 |  |  |  |  | 73d |  |  |  |  |  |  |  |
| 49 | 4.4 | Selección del personal | 5d | 2018-07-02 | 2018-07-06 |  |  |  |  | 70d |  |  | Gerente de Proyecto | 40h |  | 1,750,000 |  |
| 50 | 4.5 | Contratos de Software | 3d | 2018-07-02 | 2018-07-04 |  |  |  |  | 72d |  |  | Gerente de Proyecto | 24h |  | 1,050,000 |  |
| 51 | 5 | **Trimestre V** | 1d? | 2017-09-04 | 2017-09-04 |  |  |  |  | 289d |  |  |  |  |  |  |  |
| 52 | 5.1 | **Documentación de las pruebas** | 1d? | 2017-09-04 | 2017-09-04 |  |  |  |  | 289d |  |  |  |  |  |  |  |
| 53 | 5.1.1 | Plan de capacitación para la implementación del nuevo sistema de información | 1d? | 2017-09-04 | 2017-09-04 |  |  |  |  | 279d |  |  |  |  |  |  |  |
| 54 | 5.1.2 | Distribución física de los equipos de hardware y el software necesario para implementar el sistema de información | 1d? | 2017-09-04 | 2017-09-04 |  |  |  |  | 279d |  |  |  |  |  |  |  |
| 55 | 5.2 | Presupuesto | 1d? | 2017-09-04 | 2017-09-04 |  |  |  |  | 279d |  |  |  |  |  |  |  |
| 56 | 5.3 | Informes de uso de recursos | 1d? | 2017-09-04 | 2017-09-04 |  |  |  |  | 279d |  |  |  |  |  |  |  |
| 57 | 5.4 | Informes de Costos (Del uso del Hardware y el Software) | 1d? | 2017-09-04 | 2017-09-04 |  |  |  |  | 279d |  |  |  |  |  |  |  |

| ID | WBS | Task | Duration | Start | Finish | Total slack |
| --- | --- | --- | --- | --- | --- | --- |
| 58 | 6 | **Trimestre VI** | 1d? | 2017-09-04 | 2017-09-04 | 289d |
| 59 | 6.1 | Modelo de Calidad del proyecto | 1d? | 2017-09-04 | 2017-09-04 | 279d |
| 60 | 6.2 | Construcción de manuales de Usuario y de Operación Finalizados | 1d? | 2017-09-04 | 2017-09-04 | 279d |
